Schedule from MS Project, 2022-11-01 to 2024-01-02.

## Calendars

- Standard: Mon-Fri 08:00-12:00, 13:00-17:00; Sat-Sun off.

## Schedule

| ID | WBS | Task | Type | Duration | Start | Finish | Predecessors | Total slack | Free slack |
| --- | --- | --- | --- | --- | --- | --- | --- | --- | --- |
| 1 | 1 | **Obra Completa** |  | 306d | 2022-11-01 | 2024-01-02 |  | 0d |  |
| 2 | 1.1 | Inicio obra SGA | milestone, manual | 0d | 2022-11-01 | 2022-11-01 |  |  |  |
| 3 | 1.2 | Inicio de Obra SGU | milestone, manual | 0d | 2022-11-29 | 2022-11-29 |  |  |  |
| 4 | 1.3 | Inicio obra CE | milestone, manual | 0d | 2023-05-15 | 2023-05-15 |  |  |  |
| 5 | 1.4 | Inicio obra SJ | milestone, manual | 0d | 2023-06-29 | 2023-06-29 |  |  |  |
| 6 | 1.5 | **Trabajos en Frío** |  | 279d | 2022-11-01 | 2023-11-24 |  | 27d |  |
| 7 | 1.5.1 | **SGA** |  | 142d | 2022-11-01 | 2023-05-17 |  | 150d |  |
| 8 | 1.5.1.1 | Armados de andamios en Salas |  | 5d | 2022-11-01 | 2022-11-07 | 2 | 150d | 0d |
| 9 | 1.5.1.2 | Bandejas y Canalizaciones |  | 10d | 2022-11-08 | 2022-11-21 | 8 | 291d |  |
| 10 | 1.5.1.3 | Tableros de SSAACC |  | 10d | 2022-11-08 | 2022-11-21 | 8 | 290d | 0d |
| 11 | 1.5.1.4 | Comunicaciones y Consolas |  | 10d | 2022-11-08 | 2022-11-21 | 8 | 150d | 0d |
| 12 | 1.5.1.5 | SMEC |  | 10d | 2022-11-22 | 2022-12-05 | 11 | 150d | 0d |
| 13 | 1.5.1.6 | Protecciones de Barras |  | 15d | 2022-12-06 | 2022-12-26 | 12 | 150d | 0d |
| 14 | 1.5.1.7 | Protecciones de Barra - Ensayos en Frío |  | 2d | 2022-12-27 | 2022-12-28 | 13 | 258d | 0d |
| 15 | 1.5.1.8 | Tramo 2 |  | 18d | 2022-12-27 | 2023-01-19 | 13 | 150d | 0d |
| 16 | 1.5.1.9 | Tramo 2 - Ensayos en Frío |  | 15d | 2023-01-20 | 2023-02-09 | 15 | 227d | 0d |
| 17 | 1.5.1.10 | Tramo 7 |  | 16d | 2023-01-20 | 2023-02-10 | 15 | 150d | 0d |
| 18 | 1.5.1.11 | Tramo 7 - Ensayos en frío |  | 15d | 2023-02-13 | 2023-03-03 | 17 | 211d | 0d |
| 19 | 1.5.1.12 | Tramo 3 |  | 14d | 2023-02-13 | 2023-03-02 | 17 | 150d | 0d |
| 20 | 1.5.1.13 | Tramo 3 - Ensayos en frío |  | 15d | 2023-03-03 | 2023-03-23 | 19 | 197d | 10d |
| 21 | 1.5.1.14 | Tramo 1 |  | 16d | 2023-03-03 | 2023-03-24 | 19 | 150d | 0d |
| 22 | 1.5.1.15 | Tramo 1 - Ensayos en Frío |  | 15d | 2023-03-27 | 2023-04-14 | 21 | 176d | 3d |
| 23 | 1.5.1.16 | Tramo 11 |  | 6d | 2023-03-27 | 2023-04-03 | 21 | 150d | 0d |
| 24 | 1.5.1.17 | Tramo 11 - Ensayos en Frío |  | 5d | 2023-04-04 | 2023-04-10 | 23 | 191d |  |
| 25 | 1.5.1.18 | MT |  | 12d | 2023-04-04 | 2023-04-19 | 23 | 150d | 0d |
| 26 | 1.5.1.19 | MT - Ensayos en Frío |  | 5d | 2023-04-20 | 2023-04-26 | 25 | 179d |  |
| 27 | 1.5.1.20 | Reactores |  | 12d | 2023-04-20 | 2023-05-05 | 25 | 150d | 0d |
| 28 | 1.5.1.21 | Reactores - Ensayos en Frío |  | 8d | 2023-05-08 | 2023-05-17 | 27 | 150d | 0d |

| ID | WBS | Task | Duration | Start | Finish | Predecessors | Total slack | Free slack |
| --- | --- | --- | --- | --- | --- | --- | --- | --- |
| 29 | 1.5.2 | **SGU** | 144d | 2022-11-29 | 2023-06-16 | 3 | 135d |  |
| 30 | 1.5.2.1 | Armados de andamios en Salas | 5d | 2022-11-29 | 2022-12-05 | 3 | 135d | 0d |
| 31 | 1.5.2.2 | Bandejas y Canalizaciones | 10d | 2022-12-06 | 2022-12-19 | 30 | 135d | 0d |
| 32 | 1.5.2.3 | Tableros de SSAACC | 10d | 2022-12-06 | 2022-12-19 | 30 | 265d | 0d |
| 33 | 1.5.2.4 | Comunicaciones y Consolas | 10d | 2022-12-20 | 2023-01-02 | 31 | 135d | 0d |
| 34 | 1.5.2.5 | SMEC | 6d | 2023-01-03 | 2023-01-10 | 33 | 135d | 0d |
| 35 | 1.5.2.6 | Protecciones de Barras | 15d | 2023-01-11 | 2023-01-31 | 34 | 135d | 0d |
| 36 | 1.5.2.7 | Protecciones de Barras - EF | 10d | 2023-02-01 | 2023-02-14 | 35 | 224d | 0d |
| 37 | 1.5.2.8 | Tramo 8 | 18d | 2023-02-01 | 2023-02-24 | 35 | 135d | 0d |
| 38 | 1.5.2.9 | Tramo 8 - EF | 15d | 2023-02-27 | 2023-03-17 | 37 | 199d | 0d |
| 39 | 1.5.2.10 | Tramo 4 | 14d | 2023-02-27 | 2023-03-16 | 37 | 135d | 0d |
| 40 | 1.5.2.11 | Tramo 4 - EF | 15d | 2023-03-17 | 2023-04-06 | 39 | 187d | 0d |
| 41 | 1.5.2.12 | Tramo 5 | 18d | 2023-03-17 | 2023-04-11 | 39 | 135d | 0d |
| 42 | 1.5.2.13 | Tramo 5 - EF | 15d | 2023-04-12 | 2023-05-02 | 41 | 169d | 0d |
| 43 | 1.5.2.14 | Tramo 6 | 16d | 2023-04-12 | 2023-05-03 | 41 | 135d | 0d |
| 44 | 1.5.2.15 | T6 - EF | 15d | 2023-05-04 | 2023-05-24 | 43 | 136d | 0d |
| 45 | 1.5.2.16 | MT | 12d | 2023-05-04 | 2023-05-19 | 43 | 135d | 0d |
| 46 | 1.5.2.17 | MT - EF | 5d | 2023-05-22 | 2023-05-26 | 45 | 157d |  |
| 47 | 1.5.2.18 | Reactores | 12d | 2023-05-22 | 2023-06-06 | 45 | 135d | 0d |
| 48 | 1.5.2.19 | Reactores - EF | 8d | 2023-06-07 | 2023-06-16 | 47 | 135d | 0d |
| 49 | 1.5.3 | **CE** | 140d | 2023-05-15 | 2023-11-24 | 4 | 0d |  |
| 50 | 1.5.3.1 | Armados de andamios en Salas | 5d | 2023-05-15 | 2023-05-19 | 3 | 0d |  |
| 51 | 1.5.3.2 | Bandejas y Canalizaciones | 10d | 2023-05-22 | 2023-06-02 | 50 | 152d |  |
| 52 | 1.5.3.3 | Tableros de SSAACC | 10d | 2023-05-22 | 2023-06-02 | 50 | 0d |  |
| 53 | 1.5.3.4 | Comunicaciones y Consolas | 10d | 2023-06-05 | 2023-06-16 | 52 | 0d |  |
| 54 | 1.5.3.5 | SMEC | 10d | 2023-06-19 | 2023-06-30 | 53 | 0d |  |
| 55 | 1.5.3.6 | Protecciones de Barras | 15d | 2023-07-03 | 2023-07-21 | 54 | 0d |  |
| 56 | 1.5.3.7 | Protecciones de Barras EF | 10d | 2023-07-24 | 2023-08-04 | 55 | 101d | 0d |
| 57 | 1.5.3.8 | Tramo 2 | 20d | 2023-07-24 | 2023-08-18 | 55 | 0d |  |
| 58 | 1.5.3.9 | T2 - EF | 15d | 2023-08-21 | 2023-09-08 | 57 | 59d | 0d |
| 59 | 1.5.3.10 | Tramo 3 | 18d | 2023-08-21 | 2023-09-13 | 57 | 0d |  |
| 60 | 1.5.3.11 | T3 - EF | 15d | 2023-09-14 | 2023-10-04 | 59 | 58d | 17d |
| 61 | 1.5.3.12 | Tramo 1 | 14d | 2023-09-14 | 2023-10-03 | 59 | 0d |  |
| 62 | 1.5.3.13 | T1 - EF | 15d | 2023-10-04 | 2023-10-24 | 61 | 0d |  |
| 63 | 1.5.3.14 | Tramo 0 | 6d | 2023-10-25 | 2023-11-01 | 62 | 0d |  |
| 64 | 1.5.3.15 | MT | 12d | 2023-11-02 | 2023-11-17 | 63 | 0d |  |
| 65 | 1.5.3.16 | MT - EF | 5d | 2023-11-20 | 2023-11-24 | 64 | 0d |  |

| ID | WBS | Task | Duration | Start | Finish | Predecessors | Total slack | Free slack |
| --- | --- | --- | --- | --- | --- | --- | --- | --- |
| 66 | 1.5.4 | **SJ** | 101d | 2023-06-29 | 2023-11-16 | 5 | 12d |  |
| 67 | 1.5.4.1 | Armados de andamios en Salas | 5d | 2023-06-29 | 2023-07-05 | 4SS+30d | 12d | 0d |
| 68 | 1.5.4.2 | Bandejas y Canalizaciones | 10d | 2023-07-06 | 2023-07-19 | 67 | 119d |  |
| 69 | 1.5.4.3 | Tableros de SSAACC | 10d | 2023-07-06 | 2023-07-19 | 67 | 113d | 0d |
| 70 | 1.5.4.4 | Comunicaciones y Consolas | 10d | 2023-07-06 | 2023-07-19 | 67 | 12d | 0d |
| 71 | 1.5.4.5 | SMEC | 6d | 2023-07-20 | 2023-07-27 | 70 | 12d | 0d |
| 72 | 1.5.4.6 | Protecciones de Barras | 15d | 2023-07-28 | 2023-08-17 | 71 | 12d | 0d |
| 73 | 1.5.4.7 | Proteccion de Barras - EF | 10d | 2023-08-18 | 2023-08-31 | 72 | 82d | 0d |
| 74 | 1.5.4.8 | Tramo 2 | 18d | 2023-08-18 | 2023-09-12 | 72 | 12d | 0d |
| 75 | 1.5.4.9 | T2 - EF | 15d | 2023-09-13 | 2023-10-03 | 74 | 42d | 0d |
| 76 | 1.5.4.10 | Tramo 1 | 18d | 2023-09-13 | 2023-10-06 | 74 | 12d | 0d |
| 77 | 1.5.4.11 | T1 - EF | 15d | 2023-10-09 | 2023-10-27 | 76 | 39d | 0d |
| 78 | 1.5.4.12 | Tramo 3 | 12d | 2023-10-09 | 2023-10-24 | 76 | 12d | 0d |
| 79 | 1.5.4.13 | T3 - EF | 15d | 2023-10-25 | 2023-11-14 | 78 | 12d | 0d |
| 80 | 1.5.4.14 | MT | 12d | 2023-10-25 | 2023-11-09 | 78 | 23d | 0d |
| 81 | 1.5.4.15 | MT - EF | 5d | 2023-11-10 | 2023-11-16 | 80 | 23d | 0d |
| 82 | 1.6 | **Trabajos en Caliente** | 278d | 2022-11-21 | 2023-12-14 |  | 13d |  |
| 83 | 1.6.1 | **SGA** | 214d | 2022-11-21 | 2023-09-16 |  | 77d |  |
| 84 | 1.6.1.1 | Tableros de SSAACC | 1ed | 2022-11-21 | 2022-11-22 | 10 | 1218d |  |
| 85 | 1.6.1.2 | Comunicaciones y Consolas | 8ed | 2022-11-21 | 2022-11-29 | 11 | 1197d |  |
| 86 | 1.6.1.3 | SMEC | 1ed | 2022-12-05 | 2022-12-06 | 12 | 1176d |  |
| 87 | 1.6.1.4 | Protecciones de Barras (PFI) | 8ed | 2022-12-28 | 2023-01-05 | 14 | 1086d |  |
| 88 | 1.6.1.5 | Tramo 2 | 8ed | 2023-02-09 | 2023-02-17 | 16 | 957d |  |
| 89 | 1.6.1.6 | Tramo 7 | 8ed | 2023-03-03 | 2023-03-11 | 18 | 891d |  |
| 90 | 1.6.1.7 | Tramo 3 SGA + Tramo 4 SGU | 8ed | 2023-04-06 | 2023-04-14 | 108SS, 20 | 789d |  |
| 91 | 1.6.1.8 | Tramo 1 | 8ed | 2023-04-21 | 2023-04-29 | 22FS+5d | 744d |  |
| 92 | 1.6.1.9 | Tramo 11 | 1ed | 2023-04-03 | 2023-04-04 | 23 | 819d |  |

| ID | WBS | Task | Duration | Start | Finish | Predecessors | Total slack | Free slack |
| --- | --- | --- | --- | --- | --- | --- | --- | --- |
| 93 | 1.6.1.10 | **MT** | 10d | 2023-04-20 | 2023-05-03 | 25 | 160d |  |
| 94 | 1.6.1.10.1 | Servicios Auxiliares 1 | 3d | 2023-04-20 | 2023-04-24 | 25 | 159d | 0d |
| 95 | 1.6.1.10.2 | Servicios Auxiliares 2 | 3d | 2023-04-25 | 2023-04-27 | 94 | 159d | 0d |
| 96 | 1.6.1.10.3 | Red MT | 2d | 2023-04-28 | 2023-05-01 | 95 | 159d | 0d |
| 97 | 1.6.1.10.4 | F/S Trafo o Reactor | 2ed | 2023-05-01 | 2023-05-03 | 96 | 667.88d | 43.88d |
| 98 | 1.6.1.11 | **Reactores y Prot de Barras** | 14d | 2023-05-17 | 2023-06-06 | 28 | 150d |  |
| 99 | 1.6.1.11.1 | Reactor y Proteccion B1 | 8ed | 2023-05-17 | 2023-05-25 | 97 | 642d | 0d |
| 100 | 1.6.1.11.2 | Reactor y Proteccion B2 | 8ed | 2023-05-29 | 2023-06-06 | 99FS+2d | 630d |  |
| 101 | 1.6.1.12 | Tramo 1 SGA + Tramo 2 CE | 8ed | 2023-09-08 | 2023-09-16 | 125SS | 249d | 0d |
| 102 | 1.6.2 | **SGU** | 212d | 2022-12-19 | 2023-10-11 |  | 59d |  |
| 103 | 1.6.2.1 | Tableros de SSAACC | 8ed | 2022-12-19 | 2022-12-27 | 32 | 1113d |  |
| 104 | 1.6.2.2 | Comunicaciones y Consolas | 8ed | 2023-01-02 | 2023-01-10 | 33 | 1071d |  |
| 105 | 1.6.2.3 | SMEC | 1ed | 2023-01-10 | 2023-01-11 | 34 | 1068d |  |
| 106 | 1.6.2.4 | Protecciones de Barras (PFI) | 8ed | 2023-02-14 | 2023-02-22 | 36 | 942d |  |
| 107 | 1.6.2.5 | Tramo 8 | 8ed | 2023-03-17 | 2023-03-25 | 38 | 849d |  |
| 108 | 1.6.2.6 | Tramo 4 SGU + Tramo 3 SGA | 8ed | 2023-04-06 | 2023-04-14 | 40 | 789d | 0d |
| 109 | 1.6.2.7 | Tramo 5 | 8ed | 2023-05-02 | 2023-05-10 | 42 | 711d |  |
| 110 | 1.6.2.8 | Tramo 6 | 8ed | 2023-05-24 | 2023-06-01 | 44 | 645d |  |
| 111 | 1.6.2.9 | **MT** | 10d | 2023-05-22 | 2023-06-02 | 45 | 152d |  |
| 112 | 1.6.2.9.1 | Servicios Auxiliares 1 | 3d | 2023-05-22 | 2023-05-24 | 45 | 152d | 0d |
| 113 | 1.6.2.9.2 | Servicios Auxiliares 2 | 3d | 2023-05-25 | 2023-05-29 | 112 | 152d | 0d |
| 114 | 1.6.2.9.3 | Red MT | 2d | 2023-05-30 | 2023-05-31 | 113 | 152d | 0d |
| 115 | 1.6.2.9.4 | F/S Trafo o Reactor | 2ed | 2023-05-31 | 2023-06-02 | 114 | 642d |  |
| 116 | 1.6.2.10 | **Reactores y Prot de Barras** | 6d | 2023-06-16 | 2023-06-26 |  | 135d |  |
| 117 | 1.6.2.10.1 | Reactor 1 y Prot. De Barras 1 | 4ed | 2023-06-16 | 2023-06-20 | 48 | 571.88d | 4d |
| 118 | 1.6.2.10.2 | Reactor 2 y Prot. De Barras 2 | 4ed | 2023-06-22 | 2023-06-26 | 117FS+2d | 570d |  |
| 119 | 1.6.2.11 | Tramo 6 SGU + Tramo 2 SJ | 8ed | 2023-10-03 | 2023-10-11 | 141SS | 174d | 0d |

| ID | WBS | Task | Duration | Start | Finish | Predecessors | Total slack | Free slack |
| --- | --- | --- | --- | --- | --- | --- | --- | --- |
| 120 | 1.6.3 | **CE** | 139d | 2023-06-02 | 2023-12-14 |  | 13d |  |
| 121 | 1.6.3.1 | Tableros de SSAACC | 8ed | 2023-06-02 | 2023-06-10 | 52 | 618d |  |
| 122 | 1.6.3.2 | Comunicaciones y Consolas | 8ed | 2023-06-16 | 2023-06-24 | 53 | 576d |  |
| 123 | 1.6.3.3 | SMEC | 1ed | 2023-06-30 | 2023-07-01 | 54 | 555d |  |
| 124 | 1.6.3.4 | Protecciones de Barras (PFI) | 8ed | 2023-08-04 | 2023-08-12 | 56 | 429d |  |
| 125 | 1.6.3.5 | Tramo 2 CE + Tramo 1 SGA | 8ed | 2023-09-08 | 2023-09-16 | 58 | 249d | 0d |
| 126 | 1.6.3.6 | Tramo 3 CE + Tramo 1 SJ | 8ed | 2023-10-27 | 2023-11-04 | 60, 77 | 177d | 0d |
| 127 | 1.6.3.7 | Tramo 0 | 1ed | 2023-11-01 | 2023-11-02 | 63 | 183d |  |
| 128 | 1.6.3.8 | **MT** | 10d | 2023-11-27 | 2023-12-08 | 65 | 0d |  |
| 129 | 1.6.3.8.1 | Servicios Auxiliares 1 | 3d | 2023-11-27 | 2023-11-29 | 65 | 0d |  |
| 130 | 1.6.3.8.2 | Servicios Auxiliares 2 | 3d | 2023-11-30 | 2023-12-04 | 129 | 0d |  |
| 131 | 1.6.3.8.3 | Red MT | 2d | 2023-12-05 | 2023-12-06 | 130 | 0d |  |
| 132 | 1.6.3.8.4 | F/S Trafo o Reactor | 2ed | 2023-12-06 | 2023-12-08 | 131 | 0d |  |
| 133 | 1.6.3.9 | **Prot de Barras** | 4d | 2023-12-08 | 2023-12-14 |  | 13d |  |
| 134 | 1.6.3.9.1 | Prot. De Barras 1 | 3ed | 2023-12-08 | 2023-12-11 | 132 | 57d | 0d |
| 135 | 1.6.3.9.2 | Prot. De Barras 2 | 3ed | 2023-12-11 | 2023-12-14 | 134 | 57d |  |
| 136 | 1.6.4 | **SJ** | 100d | 2023-07-19 | 2023-12-06 |  | 19d |  |
| 137 | 1.6.4.1 | Tableros de SSAACC | 8ed | 2023-07-19 | 2023-07-27 | 69 | 477d |  |
| 138 | 1.6.4.2 | Comunicaciones y Consolas | 8ed | 2023-07-19 | 2023-07-27 | 70 | 477d |  |
| 139 | 1.6.4.3 | SMEC | 1ed | 2023-07-27 | 2023-07-28 | 71 | 474d |  |
| 140 | 1.6.4.4 | Protecciones de Barras (PFI) | 8ed | 2023-08-31 | 2023-09-08 | 73 | 348d |  |
| 141 | 1.6.4.5 | Tramo 2 SJ + Tramo 6 SGU | 8ed | 2023-10-03 | 2023-10-11 | 44, 75 | 174d | 0d |
| 142 | 1.6.4.6 | Tramo 1 SJ + Tramo 3 CE | 8ed | 2023-10-27 | 2023-11-04 | 126SS | 177d |  |
| 143 | 1.6.4.7 | Tramo 3 | 8ed | 2023-11-14 | 2023-11-22 | 79 | 48d | 0d |

| ID | WBS | Task | Duration | Start | Finish | Predecessors | Total slack | Free slack |
| --- | --- | --- | --- | --- | --- | --- | --- | --- |
| 144 | 1.6.4.8 | **MT** | 10d | 2023-11-17 | 2023-11-30 | 81 | 19d |  |
| 145 | 1.6.4.8.1 | Servicios Auxiliares 1 | 3d | 2023-11-17 | 2023-11-21 | 81 | 19d | 0d |
| 146 | 1.6.4.8.2 | Servicios Auxiliares 2 | 3d | 2023-11-22 | 2023-11-24 | 145 | 19d | 0d |
| 147 | 1.6.4.8.3 | Red MT | 2d | 2023-11-27 | 2023-11-28 | 146 | 19d | 0d |
| 148 | 1.6.4.8.4 | F/S Trafo o Reactor | 2ed | 2023-11-28 | 2023-11-30 | 147 | 81d | 0d |
| 149 | 1.6.4.9 | **Prot de Barras** | 4d | 2023-11-30 | 2023-12-06 |  | 19d |  |
| 150 | 1.6.4.9.1 | Prot. De Barras 1 | 3ed | 2023-11-30 | 2023-12-03 | 148 | 81d | 0d |
| 151 | 1.6.4.9.2 | Prot. De Barras 2 | 3ed | 2023-12-03 | 2023-12-06 | 150 | 81d |  |
| 152 | 1.7 | **Desarmado y desmontajes** | 70d | 2023-09-16 | 2023-12-23 |  | 0d |  |
| 153 | 1.7.1 | SGA | 15ed | 2023-09-16 | 2023-10-01 | 101 | 249d | 0d |
| 154 | 1.7.2 | SGU | 15ed | 2023-10-11 | 2023-10-26 | 119 | 174d | 0d |
| 155 | 1.7.3 | CE | 15ed | 2023-12-08 | 2023-12-23 | 128 | 0d |  |
| 156 | 1.7.4 | SJ | 15ed | 2023-11-22 | 2023-12-07 | 143 | 48d | 0d |
| 157 | 1.8 | **Reposicionamiento Definitivo** | 67d | 2023-10-01 | 2024-01-02 |  | 0d |  |
| 158 | 1.8.1 | SGA | 10ed | 2023-10-01 | 2023-10-11 | 153 | 249d |  |
| 159 | 1.8.2 | SGU | 10ed | 2023-10-26 | 2023-11-05 | 154 | 174d |  |
| 160 | 1.8.3 | CE | 10ed | 2023-12-23 | 2024-01-02 | 155 | 0d |  |
| 161 | 1.8.4 | SJ | 10ed | 2023-12-07 | 2023-12-17 | 156 | 48d |  |
